# CS490 Project

How a schedule from MS Project changed from version to version. A marks actual dates.

## Version 1 (saved 2019-04-29)

Note of the change: Merge remote-tracking branch 'upstream/master'

| ID | WBS | Task | Duration | Start | Finish | Predecessors | Complete | Total float | Constraint |
| --- | --- | --- | --- | --- | --- | --- | --- | --- | --- |
| 1 | 1 | **Online Branded System (OBS)** | 19d? | 2019-04-15 08:00 A | 2019-05-09 17:00 |  | 54% | 0d |  |
| 2 | 1.1 | **Milestones** | 1d? | 2019-05-09 08:00 | 2019-05-09 17:00 |  |  | 0d |  |
| 3 |  | Project Presentation & UAT | 1d? | 2019-05-09 08:00 | 2019-05-09 17:00 | 151 |  | 0d | must finish on 2019-05-09 17:00 |
| 4 | 2 | **Iteration 1** | 5d | 2019-04-15 08:00 A | 2019-04-19 17:00 A |  | 100% |  |  |
| 5 |  | Collect, analysis and finlize Scope and Scope detail | 5d | 2019-04-15 08:00 A | 2019-04-19 17:00 A |  | 100% |  | start no earlier than 2019-04-15 08:00 |
| 6 |  | Create and finalize project iteration plan | 5d | 2019-04-15 08:00 A | 2019-04-19 17:00 A |  | 100% |  | start no earlier than 2019-04-15 08:00 |
| 7 |  | Create and finalize WBS | 5d | 2019-04-15 08:00 A | 2019-04-19 17:00 A |  | 100% |  | finish no earlier than 2019-04-19 17:00 |
| 8 |  | CreateER Diagram | 5d | 2019-04-15 08:00 A | 2019-04-19 17:00 A |  | 100% |  | finish no earlier than 2019-04-19 17:00 |
| 9 |  | Create System Architecture | 5d | 2019-04-15 08:00 A | 2019-04-19 17:00 A |  | 100% |  | finish no earlier than 2019-04-19 17:00 |
| 10 |  | Create Project Source code structure | 5d | 2019-04-15 08:00 A | 2019-04-19 17:00 A |  | 100% |  | finish no earlier than 2019-04-19 17:00 |
| 11 |  | Create Functional Specification | 5d | 2019-04-15 08:00 A | 2019-04-19 17:00 A |  | 100% |  | finish no earlier than 2019-04-19 17:00 |
| 12 | 2 | **Iteration 2** | 8.5d? | 2019-04-22 08:00 A | 2019-05-02 12:00 | 4 | 50% | 0d |  |
| 13 | WBS_011 | **Entity Module** | 0.5d | 2019-04-22 08:00 A | 2019-04-22 12:00 A |  | 100% |  |  |
| 14 |  | Entity Model | 0.5d | 2019-04-22 08:00 A | 2019-04-22 12:00 A |  | 100% |  |  |
| 15 | WBS_002 | **Vendor Registration Module** | 3.5d | 2019-04-22 08:00 A | 2019-04-25 12:00 |  | 60% | 0d |  |
| 16 | WBS_002_001 | **Vendor Registration** | 2d | 2019-04-22 08:00 A | 2019-04-23 17:00 |  | 75% | 0d |  |
| 17 |  | Design UI | 0.5d | 2019-04-22 08:00 A | 2019-04-22 12:00 A |  | 100% |  | start no earlier than 2019-04-22 08:00 |
| 18 |  | Implment Backend | 1d | 2019-04-22 13:00 A | 2019-04-23 12:00 A | 17 | 100% |  |  |
| 19 |  | Testing | 0.5d | 2019-04-23 13:00 | 2019-04-23 17:00 | 18 |  | 12d |  |
| 20 | WBS_002_002 | **Vendor Login** | 2d | 2019-04-23 13:00 A | 2019-04-25 12:00 |  | 33% | 0d |  |
| 21 |  | Design UI | 0.5d | 2019-04-23 13:00 A | 2019-04-23 17:00 A | 18 | 100% |  |  |
| 22 |  | Implement Backend | 0.5d | 2019-04-24 13:00 | 2019-04-24 17:00 | 46 |  | 9d |  |
| 23 |  | Testing | 0.5d | 2019-04-25 08:00 | 2019-04-25 12:00 | 22 |  | 10.5d |  |
| 24 | WBS_002_003 | **Admin Forget Password** | 1.5d | 2019-04-22 08:00 A | 2019-04-23 12:00 |  | 67% | 0d |  |
| 25 |  | Design UI | 0.5d | 2019-04-22 08:00 A | 2019-04-22 12:00 A |  | 100% |  |  |
| 26 |  | Implement Backend | 0.5d | 2019-04-22 13:00 A | 2019-04-22 17:00 A | 25 | 100% |  |  |
| 27 |  | Testing | 0.5d | 2019-04-23 08:00 | 2019-04-23 12:00 | 26 |  | 12.5d |  |
| 28 | WBS_001 | **User Registration Module** | 7.5d | 2019-04-23 08:00 A | 2019-05-02 12:00 |  | 11% | 0d |  |
| 29 | WBS_001_001 | **Register new User** | 7.5d | 2019-04-23 08:00 A | 2019-05-02 12:00 |  | 8% | 0d |  |
| 30 |  | Design UI | 0.5d | 2019-04-23 08:00 A | 2019-04-23 12:00 | 26 | 90% | 0d | start no earlier than 2019-04-22 08:00 |
| 31 |  | Implement Backend | 0.5d | 2019-04-23 13:00 | 2019-04-23 17:00 | 30 |  | 9.5d |  |
| 32 |  | Testing | 1d | 2019-04-24 08:00 | 2019-04-24 17:00 | 31 |  | 11d |  |
| 33 | WBS_001_003 | **Forget Password** | 2d | 2019-04-30 08:00 | 2019-05-01 17:00 |  |  | 5.5d |  |
| 34 |  | Design UI | 0.5d | 2019-04-30 08:00 | 2019-04-30 12:00 | 31, 106 |  | 5.5d |  |
| 35 |  | Implement Backend | 0.5d | 2019-04-30 13:00 | 2019-04-30 17:00 | 34 |  | 5.5d |  |
| 36 |  | Testing | 1d | 2019-05-01 08:00 | 2019-05-01 17:00 | 35 |  | 6d |  |
| 37 | WBS_001_004 | **Remove User** | 1.5d | 2019-05-01 08:00 | 2019-05-02 12:00 |  |  | 5.5d |  |
| 38 |  | Design UI | 0.5d | 2019-05-01 08:00 | 2019-05-01 12:00 | 35 |  | 5.5d |  |
| 39 |  | Implement Backend | 0.5d | 2019-05-01 13:00 | 2019-05-01 17:00 | 38 |  | 5.5d |  |
| 40 |  | Testing | 0.5d | 2019-05-02 08:00 | 2019-05-02 12:00 | 39 |  | 5.5d |  |
| 41 | WBS_001_005 | **Password Security** | 1.5d | 2019-04-25 13:00 | 2019-04-26 17:00 |  |  | 9d |  |
| 42 |  | Design UI | 0.5d | 2019-04-25 13:00 | 2019-04-25 17:00 | 47 |  | 9d |  |
| 43 |  | Implement Backend | 0.5d | 2019-04-26 08:00 | 2019-04-26 12:00 | 42 |  | 9d |  |
| 44 |  | Testing | 0.5d | 2019-04-26 13:00 | 2019-04-26 17:00 | 43 |  | 9d |  |
| 45 | WBS_001_002 | **User Login** | 3d | 2019-04-24 08:00 A | 2019-04-26 17:00 |  | 33% | 0d |  |
| 46 |  | Design UI | 0.5d | 2019-04-24 08:00 A | 2019-04-24 12:00 A | 21 | 100% |  |  |
| 47 |  | Implement Backend | 0.5d | 2019-04-25 08:00 | 2019-04-25 12:00 | 22 |  | 9d |  |
| 48 |  | Testing | 0.5d | 2019-04-26 13:00 | 2019-04-26 17:00 | 47 |  | 9d | finish no earlier than 2019-04-26 17:00 |
| 49 | WBS_005 | **Category Module** | 5d? | 2019-04-22 08:00 A | 2019-04-26 17:00 |  | 68% | 0d |  |
| 50 | WBS_005_001 | **Create new Category** | 2.5d? | 2019-04-22 08:00 A | 2019-04-24 12:00 |  | 60% | 0d |  |
| 51 |  | Design UI | 0.5d | 2019-04-22 08:00 A | 2019-04-22 12:00 A |  | 100% |  |  |
| 52 |  | Implement BE | 1d? | 2019-04-22 13:00 A | 2019-04-23 12:00 A | 51 | 100% |  |  |
| 53 |  | Test | 1d? | 2019-04-23 13:00 | 2019-04-24 12:00 | 52 |  | 11.5d |  |
| 54 | WBS_005_002 | **update category** | 2d? | 2019-04-23 13:00 A | 2019-04-25 12:00 |  | 75% | 0d |  |
| 55 |  | Design UI | 0.5d | 2019-04-23 13:00 A | 2019-04-23 17:00 A | 52 | 100% |  |  |
| 56 |  | Implement BE | 1d? | 2019-04-24 08:00 A | 2019-04-24 17:00 A | 55 | 100% |  |  |
| 57 |  | Test | 0.5d | 2019-04-25 08:00 | 2019-04-25 12:00 | 56 |  | 10.5d |  |
| 58 | WBS_005_003 | **remove category** | 2d? | 2019-04-25 08:00 A | 2019-04-26 17:00 |  | 70% | 0d |  |
| 59 |  | Design UI | 0.5d | 2019-04-25 08:00 A | 2019-04-25 12:00 A | 56 | 100% |  |  |
| 60 |  | Implement BE | 1d? | 2019-04-25 13:00 A | 2019-04-26 12:00 | 59 | 90% | 0d |  |
| 61 |  | Test | 0.5d | 2019-04-26 13:00 | 2019-04-26 17:00 | 60 |  | 9d |  |
| 62 | WBS_004 | **Product Module** | 3.8d | 2019-04-22 08:00 A | 2019-04-25 15:24 |  | 77% | 0d |  |
| 63 | WBS_004_001 | **Add Product** | 1.9d | 2019-04-22 08:00 A | 2019-04-23 16:12 |  | 79% | 0d |  |
| 64 |  | Design UI | 0.5d | 2019-04-22 08:00 A | 2019-04-22 12:00 A |  | 100% |  | start no earlier than 2019-04-22 08:00 |
| 65 |  | Implement BE | 1d | 2019-04-22 13:00 A | 2019-04-23 12:00 A | 64 | 100% |  |  |
| 66 |  | Test | 0.4d | 2019-04-23 13:00 | 2019-04-23 16:12 | 65 |  | 12.1d |  |
| 67 | WBS_004_002 | **Remove Product** | 1.3d | 2019-04-23 13:00 A | 2019-04-24 15:24 |  | 73% | 0d |  |
| 68 |  | Design UI | 0.5d | 2019-04-23 13:00 A | 2019-04-23 17:00 A | 65 | 100% |  |  |
| 69 |  | Implement BE | 0.5d | 2019-04-24 08:00 A | 2019-04-24 12:00 | 68 | 90% | 0d |  |
| 70 |  | Test | 0.3d | 2019-04-24 13:00 | 2019-04-24 15:24 | 69 |  | 11.2d |  |

| ID | WBS | Task | Duration | Start | Finish | Predecessors | Complete | Total float | Constraint |
| --- | --- | --- | --- | --- | --- | --- | --- | --- | --- |
| 71 | WBS_004_003 | **Update Product** | 1.3d | 2019-04-24 13:00 A | 2019-04-25 15:24 |  | 77% | 0d |  |
| 72 |  | Design UI | 0.5d | 2019-04-24 13:00 A | 2019-04-24 17:00 A | 69 | 100% |  |  |
| 73 |  | Implement BE | 0.5d | 2019-04-25 08:00 A | 2019-04-25 12:00 A | 72 | 100% |  |  |
| 74 |  | Test | 0.3d | 2019-04-25 13:00 | 2019-04-25 15:24 | 73 |  | 10.2d |  |
| 75 | WBS_012_001 | **Admin Registration** | 3d | 2019-04-22 08:00 A | 2019-04-24 17:00 |  | 83% | 0d |  |
| 76 |  | Design UI | 1d | 2019-04-22 08:00 A | 2019-04-22 17:00 A |  | 100% |  |  |
| 77 |  | Implement backend | 1.5d | 2019-04-23 08:00 A | 2019-04-24 12:00 A | 76 | 100% |  |  |
| 78 |  | Testing | 0.5d | 2019-04-24 13:00 | 2019-04-24 17:00 | 77 |  | 11d |  |
| 79 | WBS_003_001 | **General Search** | 2.5d | 2019-04-24 13:00 | 2019-04-26 17:00 |  |  | 6.5d |  |
| 80 |  | Design UI | 0.5d | 2019-04-24 13:00 | 2019-04-24 17:00 | 77 |  | 6.5d |  |
| 81 |  | Implement backend | 1.5d | 2019-04-25 08:00 | 2019-04-26 12:00 | 80 |  | 6.5d |  |
| 82 |  | Testing | 0.5d | 2019-04-26 13:00 | 2019-04-26 17:00 | 81 |  | 9d |  |
| 83 | BWS_008 | **Payment Module** | 3d | 2019-04-22 08:00 A | 2019-04-24 17:00 |  | 67% | 0d |  |
| 84 |  | Mock Payment Gateway | 1d | 2019-04-22 08:00 A | 2019-04-22 17:00 A |  | 100% |  |  |
| 85 |  | Integrate with module WBS_007 | 1d | 2019-04-23 08:00 A | 2019-04-23 17:00 A | 84 | 100% |  |  |
| 86 |  | Testing | 1d | 2019-04-24 08:00 | 2019-04-24 17:00 | 85 |  | 11d |  |
| 87 | 2 | **Iteration 3** | 7d? | 2019-04-24 08:00 A | 2019-05-02 17:00 |  | 1% | 0d |  |
| 88 | WBS_006 | **Shopping Cart Module** | 3.25d | 2019-04-29 08:00 | 2019-05-02 10:00 |  |  | 5d |  |
| 89 | WBS_006_001 | **View Cart** | 1.5d | 2019-04-29 08:00 | 2019-04-30 12:00 |  |  | 5.75d |  |
| 90 |  | Design UI | 0.5d | 2019-04-29 08:00 | 2019-04-29 12:00 |  |  | 5.75d | start no earlier than 2019-04-29 08:00 |
| 91 |  | Implment Backend | 0.5d | 2019-04-29 13:00 | 2019-04-29 17:00 | 90 |  | 5.75d |  |
| 92 |  | Testing | 0.5d | 2019-04-30 08:00 | 2019-04-30 12:00 | 91 |  | 7.5d |  |
| 93 | WBS_006_002 | **Add Cart** | 1.5d | 2019-04-30 08:00 | 2019-05-01 12:00 |  |  | 5.75d |  |
| 94 |  | Design UI | 0.5d | 2019-04-30 08:00 | 2019-04-30 12:00 | 91 |  | 5.75d |  |
| 95 |  | Implement Backend | 0.5d | 2019-04-30 13:00 | 2019-04-30 17:00 | 94 |  | 5.75d |  |
| 96 |  | Testing | 0.5d | 2019-05-01 08:00 | 2019-05-01 12:00 | 95 |  | 6.5d |  |
| 97 | WBS_006_003 | **Remove** | 1.25d | 2019-05-01 08:00 | 2019-05-02 10:00 |  |  | 5.75d |  |
| 98 |  | Design UI | 0.25d | 2019-05-01 08:00 | 2019-05-01 10:00 | 95 |  | 5.75d |  |
| 99 |  | Implement Backend | 0.5d | 2019-05-01 10:00 | 2019-05-01 15:00 | 98 |  | 5.75d |  |
| 100 |  | Testing | 0.5d | 2019-05-01 15:00 | 2019-05-02 10:00 | 99 |  | 5.75d |  |
| 101 | WBS_006_005 | **Checkout Cart** | 1.5d | 2019-04-29 08:00 | 2019-04-30 12:00 |  |  | 7.5d |  |
| 102 |  | Design UI | 0.5d | 2019-04-29 08:00 | 2019-04-29 12:00 |  |  | 7.5d | start no earlier than 2019-04-29 08:00 |
| 103 |  | Implement Backend | 0.5d | 2019-04-29 13:00 | 2019-04-29 17:00 | 102 |  | 7.5d |  |
| 104 |  | Testing | 0.5d | 2019-04-30 08:00 | 2019-04-30 12:00 | 103 |  | 7.5d |  |
| 105 | WBS_006_004 | **Edit** | 3d | 2019-04-29 08:00 | 2019-05-01 17:00 |  |  | 5d |  |
| 106 |  | Design UI | 1d | 2019-04-29 08:00 | 2019-04-29 17:00 |  |  | 5d | start no earlier than 2019-04-29 08:00 |
| 107 |  | Implement Backend | 1d | 2019-04-30 08:00 | 2019-04-30 17:00 | 106 |  | 6d |  |
| 108 |  | Testing | 1d | 2019-05-01 08:00 | 2019-05-01 17:00 | 107 |  | 6d |  |
| 109 | WBS_007 | **Order Module** | 3d? | 2019-04-30 08:00 | 2019-05-02 17:00 |  |  | 5d |  |
| 110 | WBS_007_001 | **Process Order UI** | 3d? | 2019-04-30 08:00 | 2019-05-02 17:00 |  |  | 5d |  |
| 111 |  | Design UI | 1d? | 2019-04-30 08:00 | 2019-04-30 17:00 | 69, 106 |  | 5d | start no earlier than 2019-04-29 08:00 |
| 112 |  | Implement BE | 1d? | 2019-05-01 08:00 | 2019-05-01 17:00 | 111 |  | 5d |  |
| 113 |  | Test & Integrate with module WBS_010 | 1d? | 2019-05-02 08:00 | 2019-05-02 17:00 | 112 |  | 5d |  |
| 114 | WBS_003_002 | **Advanced Search** | 3d | 2019-04-29 08:00 | 2019-05-01 17:00 |  |  | 6d |  |
| 115 |  | Design UI | 1d | 2019-04-29 08:00 | 2019-04-29 17:00 | 81 |  | 6d | start no earlier than 2019-04-29 08:00 |
| 116 |  | Implement backend | 1d | 2019-04-30 08:00 | 2019-04-30 17:00 | 115 |  | 6d |  |
| 117 |  | Testing | 1d | 2019-05-01 08:00 | 2019-05-01 17:00 | 116 |  | 6d |  |
| 118 | WBS_009 | **Reporting Module** | 6.2d? | 2019-04-24 08:00 A | 2019-05-02 09:36 |  | 4% | 0d |  |
| 119 | WBS_009_001 | **Weekly Report** | 1.2d | 2019-04-24 08:00 A | 2019-04-25 09:36 |  | 29% | 0d |  |
| 120 |  | Sale by product category | 0.5d | 2019-04-24 08:00 A | 2019-04-24 12:00 | 85 | 70% | 0d |  |
| 121 |  | Sale by product | 0.2d | 2019-04-24 13:00 | 2019-04-24 14:36 | 120 |  | 5.8d |  |
| 122 |  | Overall | 0.3d | 2019-04-24 14:36 | 2019-04-24 17:00 | 121 |  | 5.8d |  |
| 123 |  | Testing | 0.2d | 2019-04-25 08:00 | 2019-04-25 09:36 | 122 |  | 10.8d |  |
| 124 | WBS_009_002 | **Monthly Report** | 1.2d | 2019-04-25 08:00 | 2019-04-26 09:36 |  |  | 5.8d |  |
| 125 |  | Sale by product category | 0.5d | 2019-04-25 08:00 | 2019-04-25 12:00 | 122 |  | 5.8d |  |
| 126 |  | Sale by product | 0.2d | 2019-04-25 13:00 | 2019-04-25 14:36 | 125 |  | 5.8d |  |
| 127 |  | Overall | 0.3d | 2019-04-25 14:36 | 2019-04-25 17:00 | 126 |  | 5.8d |  |
| 128 |  | Testing | 0.2d | 2019-04-26 08:00 | 2019-04-26 09:36 | 127 |  | 9.8d |  |
| 129 | WBS_009_003 | **Quarterly Report** | 1.2d | 2019-04-26 08:00 | 2019-04-29 09:36 |  |  | 5.8d |  |
| 130 |  | Sale by product category | 0.5d | 2019-04-26 08:00 | 2019-04-26 12:00 | 127 |  | 5.8d |  |
| 131 |  | Sale by product | 0.3d | 2019-04-26 13:00 | 2019-04-26 15:24 | 130 |  | 5.8d |  |
| 132 |  | Overall | 0.2d | 2019-04-26 15:24 | 2019-04-26 17:00 | 131 |  | 5.8d |  |
| 133 |  | Testing | 0.2d | 2019-04-29 08:00 | 2019-04-29 09:36 | 132 |  | 8.8d |  |
| 134 | WBS_009_004 | **Half Year Report** | 1.2d | 2019-04-29 08:00 | 2019-04-30 09:36 |  |  | 5.8d |  |
| 135 |  | Sale by product category | 0.5d | 2019-04-29 08:00 | 2019-04-29 12:00 | 132 |  | 5.8d |  |
| 136 |  | Sale by product | 0.3d | 2019-04-29 13:00 | 2019-04-29 15:24 | 135 |  | 5.8d |  |
| 137 |  | Overall | 0.2d | 2019-04-29 15:24 | 2019-04-29 17:00 | 136 |  | 5.8d |  |
| 138 |  | Testing | 0.2d | 2019-04-30 08:00 | 2019-04-30 09:36 | 137 |  | 7.8d |  |
| 139 | WBS_009_005 | **Annually Report** | 2d? | 2019-04-30 08:00 | 2019-05-01 17:00 |  |  | 5.8d |  |
| 140 |  | Sale by product category | 0.5d | 2019-04-30 08:00 | 2019-04-30 12:00 | 137 |  | 5.8d |  |

| ID | WBS | Task | Duration | Start | Finish | Predecessors | Total float | Constraint |
| --- | --- | --- | --- | --- | --- | --- | --- | --- |
| 141 |  | Sale by product | 0.3d | 2019-04-30 13:00 | 2019-04-30 15:24 | 140 | 5.8d |  |
| 142 |  | Overall | 0.2d | 2019-04-30 15:24 | 2019-04-30 17:00 | 141 | 5.8d |  |
| 143 |  | Testing | 1d? | 2019-05-01 08:00 | 2019-05-01 17:00 | 142 | 6d |  |
| 144 | WBS_009_006 | **Ad-hoc Report** | 1.2d | 2019-05-01 08:00 | 2019-05-02 09:36 |  | 5.8d |  |
| 145 |  | Sale by product category | 0.5d | 2019-05-01 08:00 | 2019-05-01 12:00 | 142 | 5.8d |  |
| 146 |  | Sale by product | 0.3d | 2019-05-01 13:00 | 2019-05-01 15:24 | 145 | 5.8d |  |
| 147 |  | Overall | 0.2d | 2019-05-01 15:24 | 2019-05-01 17:00 | 146 | 5.8d |  |
| 148 |  | Testing | 0.2d | 2019-05-02 08:00 | 2019-05-02 09:36 | 147 | 5.8d |  |
| 149 | WBS_010 | **SMTP Module** | 1d | 2019-04-29 08:00 | 2019-04-29 17:00 |  | 8d |  |
| 150 |  | Email Function | 1d | 2019-04-29 08:00 | 2019-04-29 17:00 |  | 8d | start no earlier than 2019-04-29 08:00 |
| 151 | 2 | **Iteration 4** | 3.1d | 2019-05-06 08:00 | 2019-05-09 08:48 |  | 0d |  |
| 152 |  | Build | 0.5d | 2019-05-06 08:00 | 2019-05-06 12:00 |  | 0d | start no earlier than 2019-05-06 08:00 |
| 153 |  | Sys App Testing | 2.5d | 2019-05-06 13:00 | 2019-05-08 17:00 | 152 | 0d |  |
| 154 |  | Project Presentation | 0.1d | 2019-05-09 08:00 | 2019-05-09 08:48 | 153 | 0d |  |

## Version 2 (saved 2019-05-10)

Note of the change: Merge pull request #96 from nbbon/master

Last finish stays 2019-05-09. Complete tasks 28 → 77.

Changed:

| ID | Task | Start | Finish | Complete | Total float |
| --- | --- | --- | --- | --- | --- |
| 1 | **Online Branded System (OBS)** |  |  | 54% → 82% |  |
| 87 | **Iteration 3** |  | 2019-05-02 17:00 A | 1% → 100% | 0d → none |
| 88 | **Shopping Cart Module** | 2019-04-29 08:00 A | 2019-05-02 10:00 A | 0% → 100% | 5d → none |
| 89 | **View Cart** | 2019-04-29 08:00 A | 2019-04-30 12:00 A | 0% → 100% | 5.75d → none |
| 90 | Design UI | 2019-04-29 08:00 A | 2019-04-29 12:00 A | 0% → 100% | 5.75d → none |
| 91 | Implment Backend | 2019-04-29 13:00 A | 2019-04-29 17:00 A | 0% → 100% | 5.75d → none |
| 92 | Testing | 2019-04-30 08:00 A | 2019-04-30 12:00 A | 0% → 100% | 7.5d → none |
| 93 | **Add Cart** | 2019-04-30 08:00 A | 2019-05-01 12:00 A | 0% → 100% | 5.75d → none |
| 94 | Design UI | 2019-04-30 08:00 A | 2019-04-30 12:00 A | 0% → 100% | 5.75d → none |
| 95 | Implement Backend | 2019-04-30 13:00 A | 2019-04-30 17:00 A | 0% → 100% | 5.75d → none |
| 96 | Testing | 2019-05-01 08:00 A | 2019-05-01 12:00 A | 0% → 100% | 6.5d → none |
| 97 | **Remove** | 2019-05-01 08:00 A | 2019-05-02 10:00 A | 0% → 100% | 5.75d → none |
| 98 | Design UI | 2019-05-01 08:00 A | 2019-05-01 10:00 A | 0% → 100% | 5.75d → none |
| 99 | Implement Backend | 2019-05-01 10:00 A | 2019-05-01 15:00 A | 0% → 100% | 5.75d → none |
| 100 | Testing | 2019-05-01 15:00 A | 2019-05-02 10:00 A | 0% → 100% | 5.75d → none |
| 101 | **Checkout Cart** | 2019-04-29 08:00 A | 2019-04-30 12:00 A | 0% → 100% | 7.5d → none |
| 102 | Design UI | 2019-04-29 08:00 A | 2019-04-29 12:00 A | 0% → 100% | 7.5d → none |
| 103 | Implement Backend | 2019-04-29 13:00 A | 2019-04-29 17:00 A | 0% → 100% | 7.5d → none |
| 104 | Testing | 2019-04-30 08:00 A | 2019-04-30 12:00 A | 0% → 100% | 7.5d → none |
| 105 | **Edit** | 2019-04-29 08:00 A | 2019-05-01 17:00 A | 0% → 100% | 5d → none |
| 106 | Design UI | 2019-04-29 08:00 A | 2019-04-29 17:00 A | 0% → 100% | 5d → none |
| 107 | Implement Backend | 2019-04-30 08:00 A | 2019-04-30 17:00 A | 0% → 100% | 6d → none |
| 108 | Testing | 2019-05-01 08:00 A | 2019-05-01 17:00 A | 0% → 100% | 6d → none |
| 109 | **Order Module** | 2019-04-30 08:00 A | 2019-05-02 17:00 A | 0% → 100% | 5d → none |
| 110 | **Process Order UI** | 2019-04-30 08:00 A | 2019-05-02 17:00 A | 0% → 100% | 5d → none |
| 111 | Design UI | 2019-04-30 08:00 A | 2019-04-30 17:00 A | 0% → 100% | 5d → none |
| 112 | Implement BE | 2019-05-01 08:00 A | 2019-05-01 17:00 A | 0% → 100% | 5d → none |
| 113 | Test & Integrate with module WBS_010 | 2019-05-02 08:00 A | 2019-05-02 17:00 A | 0% → 100% | 5d → none |
| 114 | **Advanced Search** | 2019-04-29 08:00 A | 2019-05-01 17:00 A | 0% → 100% | 6d → none |
| 115 | Design UI | 2019-04-29 08:00 A | 2019-04-29 17:00 A | 0% → 100% | 6d → none |
| 116 | Implement backend | 2019-04-30 08:00 A | 2019-04-30 17:00 A | 0% → 100% | 6d → none |
| 117 | Testing | 2019-05-01 08:00 A | 2019-05-01 17:00 A | 0% → 100% | 6d → none |
| 118 | **Reporting Module** |  | 2019-05-02 09:36 A | 4% → 100% | 0d → none |
| 119 | **Weekly Report** |  | 2019-04-25 09:36 A | 29% → 100% | 0d → none |
| 120 | Sale by product category |  | 2019-04-24 12:00 A | 70% → 100% | 0d → none |
| 121 | Sale by product | 2019-04-24 13:00 A | 2019-04-24 14:36 A | 0% → 100% | 5.8d → none |
| 122 | Overall | 2019-04-24 14:36 A | 2019-04-24 17:00 A | 0% → 100% | 5.8d → none |
| 123 | Testing | 2019-04-25 08:00 A | 2019-04-25 09:36 A | 0% → 100% | 10.8d → none |
| 124 | **Monthly Report** | 2019-04-25 08:00 A | 2019-04-26 09:36 A | 0% → 100% | 5.8d → none |
| 125 | Sale by product category | 2019-04-25 08:00 A | 2019-04-25 12:00 A | 0% → 100% | 5.8d → none |
| 126 | Sale by product | 2019-04-25 13:00 A | 2019-04-25 14:36 A | 0% → 100% | 5.8d → none |
| 127 | Overall | 2019-04-25 14:36 A | 2019-04-25 17:00 A | 0% → 100% | 5.8d → none |
| 128 | Testing | 2019-04-26 08:00 A | 2019-04-26 09:36 A | 0% → 100% | 9.8d → none |
| 129 | **Quarterly Report** | 2019-04-26 08:00 A | 2019-04-29 09:36 A | 0% → 100% | 5.8d → none |
| 130 | Sale by product category | 2019-04-26 08:00 A | 2019-04-26 12:00 A | 0% → 100% | 5.8d → none |
| 131 | Sale by product | 2019-04-26 13:00 A | 2019-04-26 15:24 A | 0% → 100% | 5.8d → none |
| 132 | Overall | 2019-04-26 15:24 A | 2019-04-26 17:00 A | 0% → 100% | 5.8d → none |
| 133 | Testing | 2019-04-29 08:00 A | 2019-04-29 09:36 A | 0% → 100% | 8.8d → none |
| 134 | **Half Year Report** | 2019-04-29 08:00 A | 2019-04-30 09:36 A | 0% → 100% | 5.8d → none |
| 135 | Sale by product category | 2019-04-29 08:00 A | 2019-04-29 12:00 A | 0% → 100% | 5.8d → none |
| 136 | Sale by product | 2019-04-29 13:00 A | 2019-04-29 15:24 A | 0% → 100% | 5.8d → none |
| 137 | Overall | 2019-04-29 15:24 A | 2019-04-29 17:00 A | 0% → 100% | 5.8d → none |
| 138 | Testing | 2019-04-30 08:00 A | 2019-04-30 09:36 A | 0% → 100% | 7.8d → none |
| 139 | **Annually Report** | 2019-04-30 08:00 A | 2019-05-01 17:00 A | 0% → 100% | 5.8d → none |
| 140 | Sale by product category | 2019-04-30 08:00 A | 2019-04-30 12:00 A | 0% → 100% | 5.8d → none |
| 141 | Sale by product | 2019-04-30 13:00 A | 2019-04-30 15:24 A | 0% → 100% | 5.8d → none |
| 142 | Overall | 2019-04-30 15:24 A | 2019-04-30 17:00 A | 0% → 100% | 5.8d → none |
| 143 | Testing | 2019-05-01 08:00 A | 2019-05-01 17:00 A | 0% → 100% | 6d → none |
| 144 | **Ad-hoc Report** | 2019-05-01 08:00 A | 2019-05-02 09:36 A | 0% → 100% | 5.8d → none |
| 145 | Sale by product category | 2019-05-01 08:00 A | 2019-05-01 12:00 A | 0% → 100% | 5.8d → none |
| 146 | Sale by product | 2019-05-01 13:00 A | 2019-05-01 15:24 A | 0% → 100% | 5.8d → none |
| 147 | Overall | 2019-05-01 15:24 A | 2019-05-01 17:00 A | 0% → 100% | 5.8d → none |
| 148 | Testing | 2019-05-02 08:00 A | 2019-05-02 09:36 A | 0% → 100% | 5.8d → none |
| 149 | **SMTP Module** | 2019-04-29 08:00 A | 2019-04-29 17:00 A | 0% → 100% | 8d → none |
| 150 | Email Function | 2019-04-29 08:00 A | 2019-04-29 17:00 A | 0% → 100% | 8d → none |
| 151 | **Iteration 4** | 2019-05-06 08:00 A | 2019-05-09 08:48 A | 0% → 100% | 0d → none |
| 152 | Build | 2019-05-06 08:00 A | 2019-05-06 12:00 A | 0% → 100% | 0d → none |
| 153 | Sys App Testing | 2019-05-06 13:00 A | 2019-05-08 17:00 A | 0% → 100% | 0d → none |
| 154 | Project Presentation | 2019-05-09 08:00 A | 2019-05-09 08:48 A | 0% → 100% | 0d → none |
